# Group_6

Schedule from MS Project, 2024-03-04 to 2025-06-20, costs in €.

## Calendars

- Standard: Mon-Fri 08:00-12:00, 13:00-17:00; Sat-Sun off.

## Resources

| Resource | Rate |
| --- | --- |
| Pedro Manuel (PM) | 58 |
| Christian Doff | 36 |
| Fábio Johansen | 44 |
| Guilherme Mourão | 44 |
| Rodrigo Pedro | 44 |
| Solar Panel System Suppliers |  |
| Electrical Contractors |  |
| Civil Engineering Firm |  |
| Logistics and Transportation Services |  |
| Maintenance Services |  |

## Schedule

| ID | WBS | Task | Type | Duration | Start | Finish | Predecessors | Total slack | Free slack | Constraint | Resources | Work | Cost |
| --- | --- | --- | --- | --- | --- | --- | --- | --- | --- | --- | --- | --- | --- |
| 1 | 1 | **Solar Installation at Train Stations** |  | 340d | 2024-03-04 | 2025-06-20 |  | 0d |  |  |  | 2800h | 2,239,592 |
| 2 | 1.1 | Project Management |  | 68w | 2024-03-04 | 2025-06-20 |  | 0d |  |  | Pedro Manuel (PM) [40%] | 1088h | 63,104 |
| 3 | 1.2 | **Preliminary Phase** |  | 20d | 2024-03-04 | 2024-03-29 |  | 0d |  |  |  | 144h | 5,888 |
| 4 | 1.2.1 | Conduct site assessment for each train station |  | 4w | 2024-03-04 | 2024-03-29 |  | 0d |  | must start on 2024-03-04 | Christian Doff [20%]; Fábio Johansen [40%] | 96h | 3,968 |
| 5 | 1.2.2 | Analyze energy consumption for each train station |  | 3w | 2024-03-04 | 2024-03-22 |  | 0d |  | must start on 2024-03-04 | Christian Doff [20%]; Fábio Johansen [20%] | 48h | 1,920 |
| 6 | 1.2.3 | Site Assessment Completed | milestone | 0w | 2024-03-29 | 2024-03-29 | 4, 5 | 0d |  |  |  |  |  |
| 7 | 1.3 | **Planning & Compliance** |  | 90d | 2024-04-01 | 2024-08-02 |  | 0d |  |  |  | 288h | 13,680 |
| 8 | 1.3.1 | Select PV system technology |  | 4w | 2024-04-01 | 2024-04-26 | 6 | 0d |  |  | Pedro Manuel (PM) [20%]; Guilherme Mourão [40%] | 96h | 4,672 |
| 9 | 1.3.2 | Create detailed system designs |  | 6w | 2024-04-29 | 2024-06-07 | 8 | 0d |  |  | Pedro Manuel (PM) [10%]; Guilherme Mourão [30%] | 96h | 4,560 |
| 10 | 1.3.3 | Develop recommendations |  | 4w | 2024-06-10 | 2024-07-05 | 8, 9 | 0d |  |  | Pedro Manuel (PM) [10%]; Guilherme Mourão [10%] | 32h | 1,632 |
| 11 | 1.3.4 | PV System Technology Selected and Approved | milestone | 0w | 2024-07-05 | 2024-07-05 | 10 | 0d |  |  |  |  |  |
| 12 | 1.3.5 | Prepare regulatory compliance documentation |  | 4w | 2024-07-08 | 2024-08-02 | 11 | 230d | 0d |  | Rodrigo Pedro [40%] | 64h | 2,816 |
| 13 | 1.3.6 | Regulatory Compliance Documentation Prepared | milestone | 0w | 2024-08-02 | 2024-08-02 | 12 | 230d |  |  |  |  |  |
| 14 | 1.4 | **Financial services** |  | 55d | 2024-07-08 | 2024-09-20 |  | 0d |  |  |  | 224h | 9,560 |
| 15 | 1.4.1 | Develop financial planning |  | 6w | 2024-07-08 | 2024-08-16 | 11 | 0d |  |  | Pedro Manuel (PM) [20%]; Christian Doff [40%] | 144h | 6,240 |
| 16 | 1.4.2 | Generate cost-benefit analysis report |  | 5w | 2024-08-19 | 2024-09-20 | 15 | 0d |  |  | Pedro Manuel (PM) [10%]; Christian Doff [30%] | 80h | 3,320 |
| 17 | 1.4.3 | Financial Plan Approved | milestone | 0w | 2024-09-20 | 2024-09-20 | 15, 16 | 0d |  |  |  |  |  |
| 18 | 1.5 | **Procurement & Vendor Management** |  | 75d | 2024-09-23 | 2025-01-03 |  | 0d |  |  |  | 312h | 13,728 |
| 19 | 1.5.1 | Conduct procurement & vendor selection |  | 6w | 2024-09-23 | 2024-11-01 | 17 | 0d |  |  | Fábio Johansen [50%] | 120h | 5,280 |
| 20 | 1.5.2 | Negotiate vendor contracts |  | 3w | 2024-11-04 | 2024-11-22 | 19 | 0d |  |  | Fábio Johansen [60%] | 72h | 3,168 |
| 21 | 1.5.3 | Create logistics plan |  | 6w | 2024-11-25 | 2025-01-03 | 20 | 0d |  |  | Guilherme Mourão [50%] | 120h | 5,280 |
| 22 | 1.5.4 | Procurement and Vendor Contracts Finalized | milestone | 0w | 2025-01-03 | 2025-01-03 | 21 | 0d |  |  |  |  |  |
| 23 | 1.6 | **Implementation & Testing** |  | 260d | 2024-04-01 | 2025-03-28 |  | 0d |  |  |  | 240h | 1,960,560 |
| 24 | 1.6.1 | Conduct seasonal irradiance study |  | 3w | 2024-04-01 | 2024-04-19 | 4, 5 | 185d |  |  | Fábio Johansen [40%] | 48h | 2,112 |
| 25 | 1.6.2 | Install the solar panels |  | 8w | 2025-01-06 | 2025-02-28 | 22, 24 | 0d |  |  | Fábio Johansen [10%]; Guilherme Mourão [10%]; Civil Engineering Firm [0.1%]; Electrical Contractors [0.1%]; Logistics and Transportation Services [0.1%]; Solar Panel System Suppliers [0.1%] | 64h | 1,952,816 |
| 26 | 1.6.3 | Complete installation reports |  | 3w | 2025-03-03 | 2025-03-21 | 25 | 5d |  |  | Fábio Johansen [20%]; Guilherme Mourão [20%] | 48h | 2,112 |
| 27 | 1.6.4 | Secure grid connection approvals |  | 4w | 2025-03-03 | 2025-03-28 | 25 | 0d |  |  | Fábio Johansen [30%]; Guilherme Mourão [20%] | 80h | 3,520 |
| 28 | 1.6.5 | Solar Panels Installed in All Stations | milestone | 0w | 2025-03-28 | 2025-03-28 | 25, 26, 27 | 0d |  |  |  |  |  |

| ID | WBS | Task | Type | Duration | Start | Finish | Predecessors | Total slack | Resources | Work | Cost |
| --- | --- | --- | --- | --- | --- | --- | --- | --- | --- | --- | --- |
| 29 | 1.7 | **Operations & Training** |  | 20d | 2025-03-31 | 2025-04-25 |  | 0d |  | 160h | 157,040 |
| 30 | 1.7.1 | Implement monitoring & maintenance plan for PV systems |  | 4w | 2025-03-31 | 2025-04-25 | 28 | 0d | Fábio Johansen [20%]; Rodrigo Pedro [30%]; Maintenance Services [0.1%] | 80h | 153,520 |
| 31 | 1.7.2 | Develop training materials & conduct sessions for station staff |  | 4w | 2025-03-31 | 2025-04-25 | 28 | 0d | Fábio Johansen [30%]; Rodrigo Pedro [20%] | 80h | 3,520 |
| 32 | 1.7.3 | Monitoring & Maintenance Plan Implemented | milestone | 0w | 2025-04-25 | 2025-04-25 | 30, 31 | 0d |  |  |  |
| 33 | 1.8 | **Community & Stakeholder Engagement** |  | 20d | 2025-04-28 | 2025-05-23 |  | 20d |  | 112h | 4,672 |
| 34 | 1.8.1 | Document community engagement |  | 4w | 2025-04-28 | 2025-05-23 | 32 | 20d | Rodrigo Pedro [40%] | 64h | 2,816 |
| 35 | 1.8.2 | Initiate community awareness campaign |  | 4w | 2025-04-28 | 2025-05-23 | 32 | 20d | Christian Doff [20%]; Rodrigo Pedro [10%] | 48h | 1,856 |
| 36 | 1.9 | **Finalization & Evaluation** |  | 40d | 2025-04-28 | 2025-06-20 |  | 0d |  | 232h | 11,360 |
| 37 | 1.9.1 | Evaluate PV system performance |  | 3w | 2025-04-28 | 2025-05-16 | 32 | 0d | Pedro Manuel (PM) [40%] | 48h | 2,784 |
| 38 | 1.9.2 | Create performance evaluation reports of PV systems |  | 2w | 2025-05-19 | 2025-05-30 | 37 | 0d | Christian Doff [30%]; Guilherme Mourão [10%] | 32h | 1,216 |
| 39 | 1.9.3 | PV System Performance Evaluated and Approved | milestone | 0w | 2025-05-30 | 2025-05-30 | 38 | 0d |  |  |  |
| 40 | 1.9.4 | Assess sustainability impact |  | 2w | 2025-05-19 | 2025-05-30 | 37 | 15d | Guilherme Mourão [20%]; Rodrigo Pedro [10%] | 24h | 1,056 |
| 41 | 1.9.5 | Conduct final tests & commissioning |  | 4w | 2025-05-19 | 2025-06-13 | 37 | 5d | Fábio Johansen [40%]; Guilherme Mourão [10%] | 80h | 3,520 |
| 42 | 1.9.6 | Compile final project documentation |  | 3w | 2025-06-02 | 2025-06-20 | 39 | 0d | Pedro Manuel (PM) [40%] | 48h | 2,784 |
| 43 | 1.9.7 | Final Project Documentation Compiled and Submitted | milestone | 0w | 2025-06-20 | 2025-06-20 | 34, 35, 40, 41, 42, 13, 38 | 0d |  |  |  |
